Schedule from GanttProject, 2019-04-24 to 2019-07-15.

## Calendars

- Project calendar: Mon-Fri working; Sat-Sun off. Exceptions (off unless hours are given): 2019-06-07.

## Resources

| Resource |
| --- |
| Peter Cheng |
| Olivia Lan |
| Paul Hsieh |
| Tim Don |
| Terry Zhuang |
| Aaron Wei |
| Will Hsu |
| Max Wang |
| Mark Chen |
| David Kang |
| Leo Chen |
| Hulk Yang |
| Kay Lu |
| Lee Li |
| Betty Chen |
| Tako Chen |
| Aaron Wei |
| Phillip Wang |
| Phillip Wang |
| Billy Tseng |
| Hien Liu |
| Tony Lin |
| Johnny Lin |
| Ken Liao |
| Alice Wang |
| Byone Wu |
| Ronald Garcia |
| David |
| Mark |

## Schedule

| ID | WBS | Task | Duration | Start | Finish | Predecessors | Complete | Resources |
| --- | --- | --- | --- | --- | --- | --- | --- | --- |
| 1 | 1 | **Data Masking Program** | 58d | 2019-04-24 | 2019-07-15 |  | 66% |  |
| 2 | 1.1 | Integrated Testing | 5d | 2019-07-09 | 2019-07-15 | 3, 16 |  |  |
| 3 | 1.2 | **Output Generator** | 5d | 2019-07-02 | 2019-07-08 | 5, 7, 13 |  |  |
| 4 | 1.2.1 | Modules intergrations--RE/Generatior/Look-Up/PHP | 5d | 2019-07-02 | 2019-07-08 |  |  | Billy Tseng |
| 5 | 1.3 | **Regular expression** | 3d | 2019-05-10 | 2019-05-14 |  | 100% |  |
| 6 | 1.3.1 | RE2 Rules validatior | 3d | 2019-05-10 | 2019-05-14 |  | 100% | Billy Tseng |
| 7 | 1.4 | **Generator** | 32d | 2019-05-02 | 2019-06-17 |  | 60% |  |
| 8 | 1.4.1 | Source code review | 11d | 2019-05-02 | 2019-05-16 |  | 100% | Billy Tseng |
| 9 | 1.4.2 | Tree structure building | 21d | 2019-05-15 | 2019-06-13 | 6 | 50% | Billy Tseng |
| 10 | 1.4.3 | C++ lexical analyzer and parser | 10d | 2019-06-03 | 2019-06-17 |  |  | Lee Li |
| 11 | 1.4.4 | Study and Demo UTF-8 encode in Bison | 6d | 2019-05-09 | 2019-05-16 |  | 100% | Lee Li |
| 12 | 1.4.5 | Study and Demo OS random generator | 4d | 2019-05-17 | 2019-05-22 | 11 | 100% | Lee Li |
| 13 | 1.5 | **Look-Up Interface** | 6d | 2019-06-18 | 2019-06-25 |  |  |  |
| 14 | 1.5.1 | Customized string replacement | 6d | 2019-06-18 | 2019-06-25 | 10 |  | Billy Tseng |
| 15 | 1.5.2 | Look-Up Interface repository building | 6d | 2019-06-18 | 2019-06-25 | 10 |  | Billy Tseng |
| 16 | 1.6 | **Predefined Policies** | 9d | 2019-04-24 | 2019-05-06 |  | 100% |  |
| 17 | 1.6.1 | Regular expression Policy Definition | 7d | 2019-04-24 | 2019-05-02 |  | 100% | Leo Chen |
| 18 | 1.6.2 | Credit card number data masking policy | 7d | 2019-04-26 | 2019-05-06 |  | 100% | Leo Chen |
| 19 | 1.6.3 | Email address data masking policy | 7d | 2019-04-24 | 2019-05-02 |  | 100% | Ronald Garcia |
| 20 | 1.6.4 | US national ID data masking policy - National ID (US) | 7d | 2019-04-24 | 2019-05-02 |  | 100% | Ronald Garcia |
| 21 | 1.6.5 | Canada national ID data masking policy - National ID (CA) | 7d | 2019-04-24 | 2019-05-02 |  | 100% | Ronald Garcia |
| 22 | 1.6.6 | French national ID data masking policy - National ID (FR) | 7d | 2019-04-24 | 2019-05-02 |  | 100% | Ronald Garcia |
| 23 | 1.6.7 | Italy national ID data masking policy - National ID (IT) | 7d | 2019-04-24 | 2019-05-02 |  | 100% | Ronald Garcia |
| 24 | 1.6.8 | Date age data masking policy | 7d | 2019-04-24 | 2019-05-02 |  | 100% | Ronald Garcia |
| 25 | 1.6.9 | Repeatable replacement data masking policy | 7d | 2019-04-24 | 2019-05-02 |  | 100% | Ronald Garcia |
| 26 | 1.6.10 | Random replacement data masking policy | 7d | 2019-04-24 | 2019-05-02 |  | 100% | Ronald Garcia |
| 27 | 1.6.11 | Hash data masking policy | 7d | 2019-04-24 | 2019-05-02 |  | 100% | Ronald Garcia |
| 28 | 1.6.12 | Hash lookup data masking policy | 7d | 2019-04-24 | 2019-05-02 |  | 100% | Ronald Garcia |
| 29 | 1.6.13 | IP Address data masking policy | 7d | 2019-04-24 | 2019-05-02 |  | 100% | Ronald Garcia |

Notes:
- 2: TBD

| ID | WBS | Task | Duration | Start | Finish | Predecessors | Complete | Resources |
| --- | --- | --- | --- | --- | --- | --- | --- | --- |
| 30 | 1.7 | **Predefined Policy for Specified Regions** | 8d | 2019-04-24 | 2019-05-03 |  | 100% |  |
| 31 | 1.7.1 | Hong Kong (HK) national ID data masking policy | 8d | 2019-04-24 | 2019-05-03 |  | 100% | Ronald Garcia |
| 32 | 1.7.2 | Street address data masking policy (HK) | 8d | 2019-04-24 | 2019-05-03 |  | 100% | Ronald Garcia |
| 33 | 1.7.3 | Hong Kong Telephone Masking Policy (HK) | 8d | 2019-04-24 | 2019-05-03 |  | 100% | Ronald Garcia |
| 34 | 1.7.4 | Taiwan(TW) national ID data masking policy | 8d | 2019-04-24 | 2019-05-03 |  | 100% | Ronald Garcia |
| 35 | 1.7.5 | Address data masking policy (TW) | 8d | 2019-04-24 | 2019-05-03 |  | 100% | Ronald Garcia |
| 36 | 1.7.6 | Taiwanese Telephone Number data masking policy | 8d | 2019-04-24 | 2019-05-03 |  | 100% | Ronald Garcia |
| 37 | 1.8 | **Website** | 5d | 2019-05-08 | 2019-05-14 |  | 100% |  |
| 38 | 1.8.1 | Regular expression web UI | 5d | 2019-05-08 | 2019-05-14 |  | 100% | Leo Chen |
| 39 | 1.9 | Study PHP C++ RPC | 7d | 2019-05-23 | 2019-05-31 | 12 | 100% | Lee Li |
| 40 | 1.10 | Define Input/Output Interface | 5d | 2019-05-20 | 2019-05-24 |  | 100% | Billy Tseng |

Notes:
- 32: This part might be tricky to do
